# SiLAV

Schedule from Planner, 2013-07-30 to 2016-08-05.
Innsware

## Calendars

- SiLAV: Mon-Sat 08:00-12:00; Sun off.

## Resources

| Resource |
| --- |
| Sebastian |
| Jeremias |

## Schedule

| ID | WBS | Task | Start | Finish | Predecessors | Work |
| --- | --- | --- | --- | --- | --- | --- |
| 1 | 1 | Identificar problema | 2013-07-30 | 2013-07-30 |  | 4h |
| 2 | 2 | Elaborar estudio de mercado | 2013-07-31 | 2013-08-01 | 1 | 8h |
| 3 | 3 | Proponer solución | 2013-08-02 | 2013-08-02 | 2 | 4h |
| 4 | 4 | Definir alcance del proyecto | 2013-08-03 | 2013-08-03 | 3 | 4h |
| 5 | 5 | Determinar factibilidad | 2013-08-03 | 2013-08-03 | 3 | 4h |
| 6 | 6 | Definir metodología | 2013-08-05 | 2013-08-06 | 5 | 8h |
| 7 | 7 | Adaptar metodología al proyecto | 2013-08-07 | 2013-08-08 | 6 | 8h |
| 8 | 8 | **Inicio** | 2013-08-09 | 2013-08-24 |  | 60h |
| 9 | 8.1 | **Modelo** | 2013-08-09 | 2013-08-13 |  | 16h |
| 10 | 8.1.1 | Definir requerimientos a alto nivel | 2013-08-09 | 2013-08-09 | 7 | 4h |
| 11 | 8.1.2 | Realizar modelo de arquitectura a alto nivel | 2013-08-10 | 2013-08-13 | 10 | 12h |
| 12 | 8.2 | **Test** | 2013-08-14 | 2013-08-15 |  | 8h |
| 13 | 8.2.1 | Definir plan de testing | 2013-08-14 | 2013-08-15 | 11 | 8h |
| 14 | 8.3 | **Gestión de configuración** | 2013-08-16 | 2013-08-20 |  | 16h |
| 15 | 8.3.1 | Investigar herramientas a utilizar | 2013-08-16 | 2013-08-19 | 13 | 12h |
| 16 | 8.3.2 | Preparar entorno de configuración | 2013-08-20 | 2013-08-20 | 15 | 4h |
| 17 | 8.4 | **Gestión de proyecto** | 2013-08-21 | 2013-08-24 |  | 16h |
| 18 | 8.4.1 | Definir plan de gestión de riesgos | 2013-08-21 | 2013-08-22 | 16 | 8h |
| 19 | 8.4.2 | Gestionar riesgos | 2013-08-23 | 2013-08-23 | 18 | 4h |
| 20 | 8.4.3 | Verificar cumplimiento de los objetivos de la fase | 2013-08-24 | 2013-08-24 | 19 | 4h |
| 21 | 8.5 | **Entorno** | 2013-08-24 | 2013-08-24 |  | 4h |
| 22 | 8.5.1 | Instalar y configurar herramientas de software | 2013-08-24 | 2013-08-24 | 19 | 4h |
| 23 | 9 | **Elaboración** | 2013-08-26 | 2013-10-15 |  | 180h |
| 24 | 9.1 | **Subproyecto AppWeb** | 2013-08-26 | 2013-09-03 |  | 32h |
| 25 | 9.1.1 | **Modelo** | 2013-08-26 | 2013-08-28 |  | 12h |
| 26 | 9.1.1.1 | Especificar requerimientos | 2013-08-26 | 2013-08-26 | 20 | 4h |
| 27 | 9.1.1.2 | Realizar modelo de casos de uso | 2013-08-27 | 2013-08-27 | 26 | 4h |
| 28 | 9.1.1.3 | Realizar prototipo de Interfaz de usuario | 2013-08-28 | 2013-08-28 | 27 | 4h |

| ID | WBS | Task | Start | Finish | Predecessors | Work |
| --- | --- | --- | --- | --- | --- | --- |
| 29 | 9.1.2 | **Gestión de proyecto** | 2013-08-29 | 2013-09-03 |  | 20h |
| 30 | 9.1.2.1 | Investigar tecnología a utilizar | 2013-08-29 | 2013-09-03 | 28 | 20h |
| 31 | 9.2 | **Subproyecto AppMoviles** | 2013-09-04 | 2013-09-12 |  | 32h |
| 32 | 9.2.1 | **Modelo** | 2013-09-04 | 2013-09-06 |  | 12h |
| 33 | 9.2.1.1 | Especificar requerimientos | 2013-09-04 | 2013-09-04 | 30 | 4h |
| 34 | 9.2.1.2 | Realizar modelo de casos de uso | 2013-09-05 | 2013-09-05 | 33 | 4h |
| 35 | 9.2.1.3 | Realizar prototipo de interfaz de usuario | 2013-09-06 | 2013-09-06 | 34 | 4h |
| 36 | 9.2.2 | **Gestión de proyecto** | 2013-09-07 | 2013-09-12 |  | 20h |
| 37 | 9.2.2.1 | Investigar tecnología a utilizar | 2013-09-07 | 2013-09-12 | 35 | 20h |
| 38 | 9.3 | **Subproyecto WebService** | 2013-09-13 | 2013-09-20 |  | 28h |
| 39 | 9.3.1 | **Modelo** | 2013-09-13 | 2013-09-14 |  | 8h |
| 40 | 9.3.1.1 | Especificar requerimientos | 2013-09-13 | 2013-09-13 | 37 | 4h |
| 41 | 9.3.1.2 | Realizar modelo de casos de uso | 2013-09-14 | 2013-09-14 | 40 | 4h |
| 42 | 9.3.2 | **Gestión de proyecto** | 2013-09-16 | 2013-09-20 |  | 20h |
| 43 | 9.3.2.1 | Investigar tecnología a utilizar | 2013-09-16 | 2013-09-20 | 41 | 20h |
| 44 | 9.4 | **Subproyecto AppControlPasaje** | 2013-09-21 | 2013-09-28 |  | 28h |
| 45 | 9.4.1 | **Modelo** | 2013-09-21 | 2013-09-23 |  | 8h |
| 46 | 9.4.1.1 | Especificar requerimientos | 2013-09-21 | 2013-09-21 | 43 | 4h |
| 47 | 9.4.1.2 | Realizar modelo de casos de uso | 2013-09-23 | 2013-09-23 | 46 | 4h |
| 48 | 9.4.2 | **Gestión de proyecto** | 2013-09-24 | 2013-09-28 |  | 20h |
| 49 | 9.4.2.1 | Investigar tecnología a utilizar | 2013-09-24 | 2013-09-28 | 47 | 20h |
| 50 | 9.5 | **Subproyecto AppUsuarios** | 2013-09-30 | 2013-10-02 |  | 12h |
| 51 | 9.5.1 | **Modelo** | 2013-09-30 | 2013-10-02 |  | 12h |
| 52 | 9.5.1.1 | Especificar requerimientos | 2013-09-30 | 2013-09-30 | 49 | 4h |
| 53 | 9.5.1.2 | Realizar modelo de casos de uso | 2013-10-01 | 2013-10-01 | 52 | 4h |
| 54 | 9.5.1.3 | Realizar prototipos de interfaz | 2013-10-02 | 2013-10-02 | 53 | 4h |

| ID | WBS | Task | Start | Finish | Predecessors | Work |
| --- | --- | --- | --- | --- | --- | --- |
| 55 | 9.6 | **Integración** | 2013-10-03 | 2013-10-15 |  | 48h |
| 56 | 9.6.1 | **Modelo** | 2013-10-03 | 2013-10-04 |  | 8h |
| 57 | 9.6.1.1 | Detallar modelo de arquitectura | 2013-10-03 | 2013-10-04 | 54 | 8h |
| 58 | 9.6.2 | **Implementación** | 2013-10-05 | 2013-10-08 |  | 12h |
| 59 | 9.6.2.1 | Implementar interfaces de comunicación | 2013-10-05 | 2013-10-08 | 57 | 12h |
| 60 | 9.6.3 | **Test** | 2013-10-09 | 2013-10-10 |  | 8h |
| 61 | 9.6.3.1 | Validar arquitectura | 2013-10-09 | 2013-10-09 | 59 | 4h |
| 62 | 9.6.3.2 | Actualizar plan de testing | 2013-10-10 | 2013-10-10 | 61 | 4h |
| 63 | 9.6.4 | **Despliegue** | 2013-10-11 | 2013-10-12 |  | 8h |
| 64 | 9.6.4.1 | Realizar plan de despliegue | 2013-10-11 | 2013-10-12 | 62 | 8h |
| 65 | 9.6.5 | **Gestión de proyecto** | 2013-10-14 | 2013-10-15 |  | 12h |
| 66 | 9.6.5.1 | Gestionar riesgos | 2013-10-14 | 2013-10-14 | 64 | 4h |
| 67 | 9.6.5.2 | Verificar cumplimiento de objetivos de fase | 2013-10-15 | 2013-10-15 | 66 | 4h |
| 68 | 9.6.5.3 | Actualizar planificación | 2013-10-15 | 2013-10-15 | 66 | 4h |
| 69 | 10 | **Construcción** | 2013-10-16 | 2015-11-19 |  | 2512h |
| 70 | 10.1 | **Iteración 1** | 2013-10-16 | 2014-02-20 |  | 352h |
| 71 | 10.1.1 | **Subproyecto AppWeb** | 2013-10-16 | 2013-11-09 |  | 88h |
| 72 | 10.1.1.1 | **Modelo** | 2013-10-16 | 2013-10-24 |  | 32h |
| 73 | 10.1.1.1.1 | Detallar casos de uso | 2013-10-16 | 2013-10-16 | 68 | 4h |
| 74 | 10.1.1.1.2 | Realizar diagramas de estructura | 2013-10-17 | 2013-10-19 | 73 | 12h |
| 75 | 10.1.1.1.3 | Realizar diagramas de comportamiento | 2013-10-21 | 2013-10-23 | 74 | 12h |
| 76 | 10.1.1.1.4 | Actualizar prototipo de interfaz de usuario | 2013-10-24 | 2013-10-24 | 75 | 4h |
| 77 | 10.1.1.2 | **Implementación** | 2013-10-25 | 2013-11-05 |  | 40h |
| 78 | 10.1.1.2.1 | Generar código | 2013-10-25 | 2013-11-05 | 76 | 40h |

| ID | WBS | Task | Start | Finish | Predecessors | Constraint | Work |
| --- | --- | --- | --- | --- | --- | --- | --- |
| 79 | 10.1.1.3 | **Test** | 2013-11-06 | 2013-11-07 |  |  | 8h |
| 80 | 10.1.1.3.1 | Definir casos de prueba | 2013-11-06 | 2013-11-07 | 78 |  | 8h |
| 81 | 10.1.1.4 | **Gestión de proyecto** | 2013-11-08 | 2013-11-09 |  |  | 8h |
| 82 | 10.1.1.4.1 | Investigar tecnología a utilizar | 2013-11-08 | 2013-11-09 | 80 |  | 8h |
| 83 | 10.1.2 | **Subproyecto AppMoviles** | 2013-11-11 | 2013-12-05 |  |  | 88h |
| 84 | 10.1.2.1 | **Modelo** | 2013-11-11 | 2013-11-19 |  |  | 32h |
| 85 | 10.1.2.1.1 | Detallar casos de uso | 2013-11-11 | 2013-11-11 | 82 |  | 4h |
| 86 | 10.1.2.1.2 | Realizar diagramas de estructura | 2013-11-12 | 2013-11-14 | 85 |  | 12h |
| 87 | 10.1.2.1.3 | Realizar diagramas de comportamiento | 2013-11-15 | 2013-11-18 | 86 |  | 12h |
| 88 | 10.1.2.1.4 | Actualizar prototipo de interfaz de usuario | 2013-11-19 | 2013-11-19 | 87 |  | 4h |
| 89 | 10.1.2.2 | **Implementación** | 2013-11-20 | 2013-11-30 |  |  | 40h |
| 90 | 10.1.2.2.1 | Generar código | 2013-11-20 | 2013-11-30 | 88 |  | 40h |
| 91 | 10.1.2.3 | **Test** | 2013-12-02 | 2013-12-03 |  |  | 8h |
| 92 | 10.1.2.3.1 | Definir casos de prueba | 2013-12-02 | 2013-12-03 | 90 |  | 8h |
| 93 | 10.1.2.4 | **Gestión de proyecto** | 2013-12-04 | 2013-12-05 |  |  | 8h |
| 94 | 10.1.2.4.1 | Investigar tecnología a utilizar | 2013-12-04 | 2013-12-05 | 92 |  | 8h |
| 95 | 10.1.3 | **Subproyecto WebService** | 2013-12-06 | 2014-01-21 |  |  | 72h |
| 96 | 10.1.3.1 | **Modelo** | 2013-12-06 | 2014-01-08 |  |  | 28h |
| 97 | 10.1.3.1.1 | Detallar casos de uso | 2013-12-06 | 2013-12-06 | 94 |  | 4h |
| 98 | 10.1.3.1.2 | Realizar diagramas de estructura | 2013-12-07 | 2013-12-10 | 97 |  | 12h |
| 99 | 10.1.3.1.3 | Realizar diagramas de comportamiento | 2014-01-06 | 2014-01-08 |  | must start on 2014-01-06 | 12h |
| 100 | 10.1.3.2 | **Implementación** | 2014-01-09 | 2014-01-16 |  |  | 28h |
| 101 | 10.1.3.2.1 | Generar código | 2014-01-09 | 2014-01-16 | 99 |  | 28h |
| 102 | 10.1.3.3 | **Test** | 2014-01-17 | 2014-01-18 |  |  | 8h |
| 103 | 10.1.3.3.1 | Definir casos de prueba | 2014-01-17 | 2014-01-18 | 101 |  | 8h |

| ID | WBS | Task | Start | Finish | Predecessors | Work |
| --- | --- | --- | --- | --- | --- | --- |
| 104 | 10.1.3.4 | **Gestión de proyecto** | 2014-01-20 | 2014-01-21 |  | 8h |
| 105 | 10.1.3.4.1 | Investigar tecnología a utilizar | 2014-01-20 | 2014-01-21 | 103 | 8h |
| 106 | 10.1.4 | **Subproyecto AppControlPasaje** | 2014-01-22 | 2014-02-10 |  | 68h |
| 107 | 10.1.4.1 | **Modelo** | 2014-01-22 | 2014-01-29 |  | 28h |
| 108 | 10.1.4.1.1 | Detallar casos de uso | 2014-01-22 | 2014-01-22 | 105 | 4h |
| 109 | 10.1.4.1.2 | Realizar diagramas de estructura | 2014-01-23 | 2014-01-25 | 108 | 12h |
| 110 | 10.1.4.1.3 | Realizar diagramas de comportamiento | 2014-01-27 | 2014-01-29 | 109 | 12h |
| 111 | 10.1.4.2 | **Implementación** | 2014-01-30 | 2014-02-06 |  | 28h |
| 112 | 10.1.4.2.1 | Generar código | 2014-01-30 | 2014-02-06 | 110 | 28h |
| 113 | 10.1.4.3 | **Test** | 2014-02-07 | 2014-02-08 |  | 8h |
| 114 | 10.1.4.3.1 | Definir casos de prueba | 2014-02-07 | 2014-02-08 | 112 | 8h |
| 115 | 10.1.4.4 | **Gestión de proyecto** | 2014-02-10 | 2014-02-10 |  | 4h |
| 116 | 10.1.4.4.1 | Investigar tecnología a utilizar | 2014-02-10 | 2014-02-10 | 114 | 4h |
| 117 | 10.1.5 | **Integración** | 2014-02-11 | 2014-02-20 |  | 36h |
| 118 | 10.1.5.1 | **Modelo** | 2014-02-11 | 2014-02-14 |  | 16h |
| 119 | 10.1.5.1.1 | Actualizar modelo de arquitectura | 2014-02-11 | 2014-02-12 | 116 | 8h |
| 120 | 10.1.5.1.2 | Definir estructura de base de datos | 2014-02-13 | 2014-02-14 | 119 | 8h |
| 121 | 10.1.5.2 | **Implementación** | 2014-02-15 | 2014-02-15 |  | 4h |
| 122 | 10.1.5.2.1 | Crear base de datos | 2014-02-15 | 2014-02-15 | 120 | 4h |
| 123 | 10.1.5.3 | **Test** | 2014-02-17 | 2014-02-17 |  | 4h |
| 124 | 10.1.5.3.1 | Actualizar plan de testing | 2014-02-17 | 2014-02-17 | 122 | 4h |
| 125 | 10.1.5.4 | **Despliegue** | 2014-02-18 | 2014-02-18 |  | 4h |
| 126 | 10.1.5.4.1 | Actualizar plan de despliegue | 2014-02-18 | 2014-02-18 | 124 | 4h |
| 127 | 10.1.5.5 | **Gestión de proyecto** | 2014-02-19 | 2014-02-20 |  | 8h |
| 128 | 10.1.5.5.1 | Gestionar riesgos | 2014-02-19 | 2014-02-19 | 126 | 4h |
| 129 | 10.1.5.5.2 | Actualizar planificación | 2014-02-20 | 2014-02-20 | 128 | 4h |
| 130 | 10.2 | Interrupción del proyecto | 2014-02-21 | 2014-09-18 | 129 | 720h |

Notes:
- 130: Interrupción del proyecto debido a asuntos personales de los integrantes del equipo

| ID | WBS | Task | Start | Finish | Predecessors | Work |
| --- | --- | --- | --- | --- | --- | --- |
| 131 | 10.3 | **Iteración 2** | 2014-09-19 | 2015-03-11 |  | 564h |
| 132 | 10.3.1 | **Subproyecto AppWeb** | 2014-09-19 | 2014-10-25 |  | 128h |
| 133 | 10.3.1.1 | **Modelo** | 2014-09-19 | 2014-09-24 |  | 20h |
| 134 | 10.3.1.1.1 | Actualizar modelo de casos de uso | 2014-09-19 | 2014-09-19 | 130 | 4h |
| 135 | 10.3.1.1.2 | Actualizar diagramas de estructura | 2014-09-20 | 2014-09-22 | 134 | 8h |
| 136 | 10.3.1.1.3 | Actualizar diagramas de comportamiento | 2014-09-23 | 2014-09-24 | 135 | 8h |
| 137 | 10.3.1.2 | **Implementación** | 2014-09-25 | 2014-10-17 |  | 80h |
| 138 | 10.3.1.2.1 | Generar código | 2014-09-25 | 2014-10-17 | 136 | 80h |
| 139 | 10.3.1.3 | **Test** | 2014-10-18 | 2014-10-21 |  | 12h |
| 140 | 10.3.1.3.1 | Definir casos de prueba | 2014-10-18 | 2014-10-20 | 138 | 8h |
| 141 | 10.3.1.3.2 | Ejecutar casos de prueba | 2014-10-21 | 2014-10-21 | 140 | 4h |
| 142 | 10.3.1.4 | **Gestión de proyecto** | 2014-10-22 | 2014-10-25 |  | 16h |
| 143 | 10.3.1.4.1 | Investigar tecnología a utilizar | 2014-10-22 | 2014-10-25 | 141 | 16h |
| 144 | 10.3.2 | **Subproyecto AppMoviles** | 2014-10-27 | 2014-12-02 |  | 128h |
| 145 | 10.3.2.1 | **Modelo** | 2014-10-27 | 2014-10-31 |  | 20h |
| 146 | 10.3.2.1.1 | Actualizar modelo de casos de uso | 2014-10-27 | 2014-10-27 | 143 | 4h |
| 147 | 10.3.2.1.2 | Actualizar diagramas de estructura | 2014-10-28 | 2014-10-29 | 146 | 8h |
| 148 | 10.3.2.1.3 | Actualizar diagramas de comportamiento | 2014-10-30 | 2014-10-31 | 147 | 8h |
| 149 | 10.3.2.2 | **Implementación** | 2014-11-01 | 2014-11-24 |  | 80h |
| 150 | 10.3.2.2.1 | Generar código | 2014-11-01 | 2014-11-24 | 148 | 80h |
| 151 | 10.3.2.3 | **Test** | 2014-11-25 | 2014-11-27 |  | 12h |
| 152 | 10.3.2.3.1 | Definir casos de prueba | 2014-11-25 | 2014-11-26 | 150 | 8h |
| 153 | 10.3.2.3.2 | Ejecutar casos de prueba | 2014-11-27 | 2014-11-27 | 152 | 4h |
| 154 | 10.3.2.4 | **Gestión de proyecto** | 2014-11-28 | 2014-12-02 |  | 16h |
| 155 | 10.3.2.4.1 | Investigar tecnología a utilizar | 2014-11-28 | 2014-12-02 | 153 | 16h |

| ID | WBS | Task | Start | Finish | Predecessors | Constraint | Work |
| --- | --- | --- | --- | --- | --- | --- | --- |
| 156 | 10.3.3 | **Subproyecto WebService** | 2014-12-03 | 2015-01-12 |  |  | 108h |
| 157 | 10.3.3.1 | **Modelo** | 2014-12-03 | 2014-12-08 |  |  | 20h |
| 158 | 10.3.3.1.1 | Actualizar modelo de casos de uso | 2014-12-03 | 2014-12-03 | 155 |  | 4h |
| 159 | 10.3.3.1.2 | Actualizar diagramas de estructura | 2014-12-04 | 2014-12-05 | 158 |  | 8h |
| 160 | 10.3.3.1.3 | Actualizar diagramas de comportamiento | 2014-12-06 | 2014-12-08 | 159 |  | 8h |
| 161 | 10.3.3.2 | **Implementación** | 2014-12-09 | 2014-12-25 |  |  | 60h |
| 162 | 10.3.3.2.1 | Generar código | 2014-12-09 | 2014-12-25 | 160 |  | 60h |
| 163 | 10.3.3.3 | **Test** | 2015-01-05 | 2015-01-07 |  |  | 12h |
| 164 | 10.3.3.3.1 | Definir casos de prueba | 2015-01-05 | 2015-01-06 |  | must start on 2015-01-05 | 8h |
| 165 | 10.3.3.3.2 | Ejecutar casos de prueba | 2015-01-07 | 2015-01-07 | 164 |  | 4h |
| 166 | 10.3.3.4 | **Gestión de proyecto** | 2015-01-08 | 2015-01-12 |  |  | 16h |
| 167 | 10.3.3.4.1 | Investigar tecnología a utilizar | 2015-01-08 | 2015-01-12 | 165 |  | 16h |
| 168 | 10.3.4 | **Subproyecto AppControlPasaje** | 2015-01-13 | 2015-02-11 |  |  | 104h |
| 169 | 10.3.4.1 | **Modelo** | 2015-01-13 | 2015-01-17 |  |  | 20h |
| 170 | 10.3.4.1.1 | Actualizar modelo de casos de uso | 2015-01-13 | 2015-01-13 | 167 |  | 4h |
| 171 | 10.3.4.1.2 | Actualizar diagramas de comportamiento | 2015-01-14 | 2015-01-15 | 170 |  | 8h |
| 172 | 10.3.4.1.3 | Actualizar diagramas de comportamiento | 2015-01-16 | 2015-01-17 | 171 |  | 8h |
| 173 | 10.3.4.2 | **Implementación** | 2015-01-19 | 2015-02-04 |  |  | 60h |
| 174 | 10.3.4.2.1 | Generar código | 2015-01-19 | 2015-02-04 | 172 |  | 60h |
| 175 | 10.3.4.3 | **Test** | 2015-02-05 | 2015-02-07 |  |  | 12h |
| 176 | 10.3.4.3.1 | Definir casos de prueba | 2015-02-05 | 2015-02-06 | 174 |  | 8h |
| 177 | 10.3.4.3.2 | Ejecutar casos de prueba | 2015-02-07 | 2015-02-07 | 176 |  | 4h |
| 178 | 10.3.4.4 | **Gestión de proyecto** | 2015-02-09 | 2015-02-11 |  |  | 12h |
| 179 | 10.3.4.4.1 | Investigar tecnología a utilizar | 2015-02-09 | 2015-02-11 | 177 |  | 12h |

| ID | WBS | Task | Start | Finish | Predecessors | Work |
| --- | --- | --- | --- | --- | --- | --- |
| 180 | 10.3.5 | **Integración** | 2015-02-12 | 2015-03-11 |  | 96h |
| 181 | 10.3.5.1 | **Modelo** | 2015-02-12 | 2015-02-16 |  | 16h |
| 182 | 10.3.5.1.1 | Actualizar modelo de arquitectura | 2015-02-12 | 2015-02-13 | 179 | 8h |
| 183 | 10.3.5.1.2 | Actualizar estructura de base de datos | 2015-02-14 | 2015-02-16 | 182 | 8h |
| 184 | 10.3.5.2 | **Test** | 2015-02-17 | 2015-02-17 |  | 4h |
| 185 | 10.3.5.2.1 | Actualizar plan de testing | 2015-02-17 | 2015-02-17 | 183 | 4h |
| 186 | 10.3.5.3 | **Despliegue** | 2015-02-18 | 2015-02-19 |  | 8h |
| 187 | 10.3.5.3.1 | Actualizar plan de despliegue | 2015-02-18 | 2015-02-19 | 185 | 8h |
| 188 | 10.3.5.4 | **Gestión de proyecto** | 2015-02-20 | 2015-03-05 |  | 48h |
| 189 | 10.3.5.4.1 | Gestionar riesgos | 2015-02-20 | 2015-02-20 | 187 | 4h |
| 190 | 10.3.5.4.2 | Actualizar planificación | 2015-02-21 | 2015-02-21 | 189 | 4h |
| 191 | 10.3.5.4.3 | Investigar tecnología | 2015-02-23 | 2015-03-05 | 190 | 40h |
| 192 | 10.3.5.5 | **Entorno** | 2015-03-06 | 2015-03-11 |  | 20h |
| 193 | 10.3.5.5.1 | Configurar servidor virtual (VPS) | 2015-03-06 | 2015-03-11 | 191 | 20h |
| 194 | 10.4 | **Iteración 3** | 2015-03-12 | 2015-07-21 |  | 452h |
| 195 | 10.4.1 | **Subproyecto AppWeb** | 2015-03-12 | 2015-04-15 |  | 120h |
| 196 | 10.4.1.1 | **Modelo** | 2015-03-12 | 2015-03-17 |  | 20h |
| 197 | 10.4.1.1.1 | Actualizar modelo de casos de uso | 2015-03-12 | 2015-03-12 | 193 | 4h |
| 198 | 10.4.1.1.2 | Actualizar diagramas de estructura | 2015-03-13 | 2015-03-14 | 197 | 8h |
| 199 | 10.4.1.1.3 | Actualizar diagramas de comportamiento | 2015-03-16 | 2015-03-17 | 198 | 8h |
| 200 | 10.4.1.2 | **Implementación** | 2015-03-18 | 2015-04-09 |  | 80h |
| 201 | 10.4.1.2.1 | Generar código | 2015-03-18 | 2015-04-09 | 199 | 80h |
| 202 | 10.4.1.3 | **Test** | 2015-04-10 | 2015-04-13 |  | 12h |
| 203 | 10.4.1.3.1 | Definir casos de prueba | 2015-04-10 | 2015-04-11 | 201 | 8h |
| 204 | 10.4.1.3.2 | Ejecutar casos de prueba | 2015-04-13 | 2015-04-13 | 203 | 4h |

| ID | WBS | Task | Start | Finish | Predecessors | Complete | Work |
| --- | --- | --- | --- | --- | --- | --- | --- |
| 205 | 10.4.1.4 | **Gestión de proyecto** | 2015-04-14 | 2015-04-15 |  |  | 8h |
| 206 | 10.4.1.4.1 | Investigar tecnología a utilizar | 2015-04-14 | 2015-04-15 | 204 |  | 8h |
| 207 | 10.4.2 | **Subproyecto AppMoviles** | 2015-04-16 | 2015-05-20 |  |  | 120h |
| 208 | 10.4.2.1 | **Modelo** | 2015-04-16 | 2015-04-21 |  |  | 20h |
| 209 | 10.4.2.1.1 | Actualizar modelo de casos de uso | 2015-04-16 | 2015-04-16 | 206 |  | 4h |
| 210 | 10.4.2.1.2 | Actualizar diagramas de estructura | 2015-04-17 | 2015-04-18 | 209 |  | 8h |
| 211 | 10.4.2.1.3 | Actualizar diagramas de comportamiento | 2015-04-20 | 2015-04-21 | 210 |  | 8h |
| 212 | 10.4.2.2 | **Implementación** | 2015-04-22 | 2015-05-14 |  |  | 80h |
| 213 | 10.4.2.2.1 | Generar código | 2015-04-22 | 2015-05-14 | 211 |  | 80h |
| 214 | 10.4.2.3 | **Test** | 2015-05-15 | 2015-05-18 |  |  | 12h |
| 215 | 10.4.2.3.1 | Definir casos de prueba | 2015-05-15 | 2015-05-16 | 213 |  | 8h |
| 216 | 10.4.2.3.2 | Ejecutar casos de prueba | 2015-05-18 | 2015-05-18 | 215 |  | 4h |
| 217 | 10.4.2.4 | **Gestión de proyecto** | 2015-05-19 | 2015-05-20 |  |  | 8h |
| 218 | 10.4.2.4.1 | Investigar tecnología a utilizar | 2015-05-19 | 2015-05-20 | 216 |  | 8h |
| 219 | 10.4.3 | **Subproyecto WebService** | 2015-05-21 | 2015-06-13 |  |  | 84h |
| 220 | 10.4.3.1 | **Modelo** | 2015-05-21 | 2015-05-26 |  |  | 20h |
| 221 | 10.4.3.1.1 | Actualizar modelo de casos de uso | 2015-05-21 | 2015-05-21 | 218 | 100% | 4h |
| 222 | 10.4.3.1.2 | Actualizar diagramas de estructura | 2015-05-22 | 2015-05-23 | 221 |  | 8h |
| 223 | 10.4.3.1.3 | Actualizar diagramas de comportamiento | 2015-05-25 | 2015-05-26 | 222 |  | 8h |
| 224 | 10.4.3.2 | **Implementación** | 2015-05-27 | 2015-06-06 |  |  | 40h |
| 225 | 10.4.3.2.1 | Generar código | 2015-05-27 | 2015-06-06 | 223 |  | 40h |
| 226 | 10.4.3.3 | **Test** | 2015-06-08 | 2015-06-11 |  |  | 16h |
| 227 | 10.4.3.3.1 | Definir casos de prueba | 2015-06-08 | 2015-06-09 | 225 |  | 8h |
| 228 | 10.4.3.3.2 | Ejecutar casos de prueba | 2015-06-10 | 2015-06-11 | 227 |  | 8h |

| ID | WBS | Task | Start | Finish | Predecessors | Work |
| --- | --- | --- | --- | --- | --- | --- |
| 229 | 10.4.3.4 | **Gestión de proyecto** | 2015-06-12 | 2015-06-13 |  | 8h |
| 230 | 10.4.3.4.1 | Investigar tecnología a utilizar | 2015-06-12 | 2015-06-13 | 228 | 8h |
| 231 | 10.4.4 | **Subproyecto AppControlPasaje** | 2015-06-15 | 2015-07-07 |  | 80h |
| 232 | 10.4.4.1 | **Modelo** | 2015-06-15 | 2015-06-19 |  | 20h |
| 233 | 10.4.4.1.1 | Actualizar modelo de casos de uso | 2015-06-15 | 2015-06-15 | 230 | 4h |
| 234 | 10.4.4.1.2 | Actualizar diagramas de estructura | 2015-06-16 | 2015-06-17 | 233 | 8h |
| 235 | 10.4.4.1.3 | Actualizar diagramas de comportamiento | 2015-06-18 | 2015-06-19 | 234 | 8h |
| 236 | 10.4.4.2 | **Implementación** | 2015-06-20 | 2015-07-01 |  | 40h |
| 237 | 10.4.4.2.1 | Generar código | 2015-06-20 | 2015-07-01 | 235 | 40h |
| 238 | 10.4.4.3 | **Test** | 2015-07-02 | 2015-07-06 |  | 16h |
| 239 | 10.4.4.3.1 | Definir casos de prueba | 2015-07-02 | 2015-07-03 | 237 | 8h |
| 240 | 10.4.4.3.2 | Ejecutar casos de prueba | 2015-07-04 | 2015-07-06 | 239 | 8h |
| 241 | 10.4.4.4 | **Gestión de proyecto** | 2015-07-07 | 2015-07-07 |  | 4h |
| 242 | 10.4.4.4.1 | Investigar tecnología a utilizar | 2015-07-07 | 2015-07-07 | 240 | 4h |
| 243 | 10.4.5 | **Integración** | 2015-07-08 | 2015-07-21 |  | 48h |
| 244 | 10.4.5.1 | **Modelo** | 2015-07-08 | 2015-07-11 |  | 16h |
| 245 | 10.4.5.1.1 | Actualizar modelo de arquitectura | 2015-07-08 | 2015-07-09 | 242 | 8h |
| 246 | 10.4.5.1.2 | Actualizar estructura de base de datos | 2015-07-10 | 2015-07-11 | 245 | 8h |
| 247 | 10.4.5.2 | **Test** | 2015-07-13 | 2015-07-16 |  | 16h |
| 248 | 10.4.5.2.1 | Actualizar plan de testing | 2015-07-13 | 2015-07-13 | 246 | 4h |
| 249 | 10.4.5.2.2 | Realizar pruebas de integración | 2015-07-14 | 2015-07-16 | 248 | 12h |
| 250 | 10.4.5.3 | **Despliegue** | 2015-07-17 | 2015-07-17 |  | 4h |
| 251 | 10.4.5.3.1 | Actualizar plan de despliegue | 2015-07-17 | 2015-07-17 | 249 | 4h |
| 252 | 10.4.5.4 | **Gestión de proyecto** | 2015-07-18 | 2015-07-21 |  | 12h |
| 253 | 10.4.5.4.1 | Gestionar riesgos | 2015-07-18 | 2015-07-18 | 251 | 4h |
| 254 | 10.4.5.4.2 | Actualizar planificación | 2015-07-20 | 2015-07-21 | 253 | 8h |

| ID | WBS | Task | Start | Finish | Predecessors | Work |
| --- | --- | --- | --- | --- | --- | --- |
| 255 | 10.5 | **Iteración 4** | 2015-07-22 | 2015-10-19 |  | 312h |
| 256 | 10.5.1 | **Subproyecto AppWeb** | 2015-07-22 | 2015-08-18 |  | 96h |
| 257 | 10.5.1.1 | **Implementación** | 2015-07-22 | 2015-08-13 |  | 80h |
| 258 | 10.5.1.1.1 | Generar código | 2015-07-22 | 2015-08-13 | 254 | 80h |
| 259 | 10.5.1.2 | **Test** | 2015-08-14 | 2015-08-18 |  | 16h |
| 260 | 10.5.1.2.1 | Definir casos de prueba | 2015-08-14 | 2015-08-15 | 258 | 8h |
| 261 | 10.5.1.2.2 | Ejecutar casos de prueba | 2015-08-17 | 2015-08-18 | 260 | 8h |
| 262 | 10.5.2 | **Subproyecto AppMoviles** | 2015-08-19 | 2015-09-03 |  | 56h |
| 263 | 10.5.2.1 | **Implementación** | 2015-08-19 | 2015-08-29 |  | 40h |
| 264 | 10.5.2.1.1 | Generar código | 2015-08-19 | 2015-08-29 | 261 | 40h |
| 265 | 10.5.2.2 | **Test** | 2015-08-31 | 2015-09-03 |  | 16h |
| 266 | 10.5.2.2.1 | Definir casos de prueba | 2015-08-31 | 2015-09-01 | 264 | 8h |
| 267 | 10.5.2.2.2 | Ejecutar casos de prueba | 2015-09-02 | 2015-09-03 | 266 | 8h |
| 268 | 10.5.3 | **Integración** | 2015-09-04 | 2015-10-19 |  | 160h |
| 269 | 10.5.3.1 | **Implementación** | 2015-09-04 | 2015-10-08 |  | 120h |
| 270 | 10.5.3.1.1 | Realizar mapeado en OSM | 2015-09-04 | 2015-10-08 | 267 | 120h |
| 271 | 10.5.3.2 | **Gestión de proyecto** | 2015-10-09 | 2015-10-19 |  | 40h |
| 272 | 10.5.3.2.1 | Investigar tecnología | 2015-10-09 | 2015-10-16 | 270 | 28h |
| 273 | 10.5.3.2.2 | Gestionar riesgos | 2015-10-17 | 2015-10-17 | 272 | 4h |
| 274 | 10.5.3.2.3 | Actualizar planificación | 2015-10-17 | 2015-10-19 | 272 | 8h |
| 275 | 10.6 | **Iteración 5** | 2015-10-20 | 2015-11-19 |  | 112h |
| 276 | 10.6.1 | **Subproyecto AppUsuarios** | 2015-10-20 | 2015-11-12 |  | 84h |
| 277 | 10.6.1.1 | **Modelo** | 2015-10-20 | 2015-10-27 |  | 28h |
| 278 | 10.6.1.1.1 | Actualizar modelo de casos de uso | 2015-10-20 | 2015-10-21 | 274 | 8h |
| 279 | 10.6.1.1.2 | Realizar diagramas de estructura | 2015-10-22 | 2015-10-23 | 278 | 8h |
| 280 | 10.6.1.1.3 | Realizar diagramas de comportamiento | 2015-10-24 | 2015-10-26 | 279 | 8h |
| 281 | 10.6.1.1.4 | Realizar prototipo de interfaz de usuario | 2015-10-27 | 2015-10-27 | 280 | 4h |

| ID | WBS | Task | Start | Finish | Predecessors | Work |
| --- | --- | --- | --- | --- | --- | --- |
| 282 | 10.6.1.2 | **Implementación** | 2015-10-28 | 2015-11-07 |  | 40h |
| 283 | 10.6.1.2.1 | Generar código | 2015-10-28 | 2015-11-07 | 281 | 40h |
| 284 | 10.6.1.3 | **Test** | 2015-11-09 | 2015-11-12 |  | 16h |
| 285 | 10.6.1.3.1 | Definir casos de prueba | 2015-11-09 | 2015-11-10 | 283 | 8h |
| 286 | 10.6.1.3.2 | Ejecutar casos de prueba | 2015-11-11 | 2015-11-12 | 285 | 8h |
| 287 | 10.6.2 | **Integración** | 2015-11-13 | 2015-11-19 |  | 28h |
| 288 | 10.6.2.1 | **Test** | 2015-11-13 | 2015-11-16 |  | 12h |
| 289 | 10.6.2.1.1 | Actualizar plan de testing | 2015-11-13 | 2015-11-13 | 286 | 4h |
| 290 | 10.6.2.1.2 | Realizar pruebas de integración | 2015-11-14 | 2015-11-16 | 289 | 8h |
| 291 | 10.6.2.2 | **Despliegue** | 2015-11-17 | 2015-11-17 |  | 4h |
| 292 | 10.6.2.2.1 | Actualizar plan de despliegue | 2015-11-17 | 2015-11-17 | 290 | 4h |
| 293 | 10.6.2.3 | **Gestión de proyecto** | 2015-11-18 | 2015-11-19 |  | 12h |
| 294 | 10.6.2.3.1 | Gestionar riesgos | 2015-11-18 | 2015-11-18 | 292 | 4h |
| 295 | 10.6.2.3.2 | Verificar cumplimiento de fase | 2015-11-19 | 2015-11-19 | 294 | 4h |
| 296 | 10.6.2.3.3 | Actualizar planificación | 2015-11-19 | 2015-11-19 | 294 | 4h |
| 297 | 11 | Interrupción del proyecto | 2015-11-20 | 2016-04-07 | 296 | 480h |
| 298 | 12 | **Transición** | 2016-04-08 | 2016-08-05 |  | 416h |
| 299 | 12.1 | **Modelo** | 2016-04-08 | 2016-05-12 |  | 120h |
| 300 | 12.1.1 | Finalizar documentación del proyecto | 2016-04-08 | 2016-05-12 | 297 | 120h |
| 301 | 12.2 | **Implementación** | 2016-05-13 | 2016-05-30 |  | 60h |
| 302 | 12.2.1 | Corregir defectos | 2016-05-13 | 2016-05-30 | 300 | 60h |
| 303 | 12.3 | **Test** | 2016-05-31 | 2016-06-02 |  | 12h |
| 304 | 12.3.1 | Actualizar plan de testing | 2016-05-31 | 2016-05-31 | 302 | 4h |
| 305 | 12.3.2 | Realizar pruebas de sistema | 2016-06-01 | 2016-06-02 | 304 | 8h |

| ID | WBS | Task | Start | Finish | Predecessors | Work |
| --- | --- | --- | --- | --- | --- | --- |
| 306 | 12.4 | **Despliegue** | 2016-06-03 | 2016-06-13 |  | 36h |
| 307 | 12.4.1 | Realizar paquete de despliegue | 2016-06-03 | 2016-06-04 | 305 | 8h |
| 308 | 12.4.2 | Realizar manual de usuario | 2016-06-06 | 2016-06-13 | 307 | 28h |
| 309 | 12.5 | **Gestión de proyecto** | 2016-06-14 | 2016-08-05 |  | 188h |
| 310 | 12.5.1 | Gestionar riesgos | 2016-06-14 | 2016-06-14 | 308 | 4h |
| 311 | 12.5.2 | Verificar cumplimiento de fase | 2016-06-15 | 2016-06-15 | 310 | 4h |
| 312 | 12.5.3 | Actualizar planificación | 2016-06-15 | 2016-06-16 | 310 | 8h |
| 313 | 12.5.4 | Armar documentación del proyecto | 2016-06-17 | 2016-08-05 | 312 | 172h |
